# exercise_3

Schedule from MS Project, 2013-09-10 to 2014-01-17, costs in €.

## Calendars

- Standard: Mon-Fri 08:00-12:00, 13:00-17:00; Sat-Sun off.

## Resources

| Resource |
| --- |
| Project Manager |
| Sales representative |
| Teacher |
| Clerk |
| Teacher Cost |
| Equipment |

## Schedule

| ID | WBS | Task | Type | Duration | Start | Finish | Predecessors | Total slack | Free slack | Constraint | Resources | Work | Cost |
| --- | --- | --- | --- | --- | --- | --- | --- | --- | --- | --- | --- | --- | --- |
| 1 | 1 | **Organization of a workshop** |  | 93.5d | 2013-09-10 | 2014-01-17 |  | 0d |  |  |  | 2097h | 71,125 |
| 2 | 1.1 | Project start | milestone | 0d | 2013-09-10 | 2013-09-10 |  | 38d |  |  |  |  |  |
| 3 | 1.2 | **Phase 1** |  | 46d | 2013-09-10 | 2013-11-12 |  | 20d | 0d |  |  | 267.2h | 10,136 |
| 4 | 1.2.1 | T1 workshop market analysis |  | 8d | 2013-09-10 | 2013-09-19 |  | 26d |  |  | Sales representative; Project Manager [20%] | 76.8h | 3,904 |
| 5 | 1.2.2 | T2 recruit new staff |  | 4d | 2013-10-15 | 2013-10-18 |  | -5d | 0d | start no earlier than 2013-10-15 | Project Manager [20%]; Clerk [50%] | 22.4h | 912 |
| 6 | 1.2.3 | Dev1 | milestone | 0d | 2013-10-18 | 2013-10-18 | 5 | 71d |  |  |  |  |  |
| 7 | 1.2.4 | T3 choose new basic equipment |  | 7d | 2013-11-04 | 2013-11-12 | 4, 5FS+10d | -5d | 0d |  | Sales representative; Clerk [200%] | 168h | 5,320 |
| 8 | 1.3 | Phase 1 finished | milestone | 0d | 2013-11-12 | 2013-11-12 | 3FF | 54d |  |  |  |  |  |
| 9 | 1.4 | **Phase 2** |  | 34.5d | 2013-10-24 | 2013-12-11 |  | 4d | 0d |  |  | 1395h | 45,455 |
| 10 | 1.4.1 | T4 choose new special equipment |  | 9d | 2013-10-25 | 2013-11-06 | 4, 5FS+4d | 3d |  |  | Clerk [200%] | 144h | 3,600 |
| 11 | 1.4.2 | T5 draw new layout |  | 8d | 2013-11-18 | 2013-11-27 | 7SS+10d | -5d | 0d |  | Sales representative; Clerk [300%] | 227h | 6,375 |
| 12 | 1.4.3 | Dev2 | milestone | 0d | 2013-11-27 | 2013-11-27 | 11 | 43d |  |  |  |  |  |
| 13 | 1.4.4 | T6 train new staff |  | 15d | 2013-11-12 | 2013-12-02 | 10 | 0d |  | must finish on 2013-12-02 | Teacher; Clerk [200%] | 360h | 12,000 |
| 14 | 1.4.5 | T7 order new basic equipment |  | 25d | 2013-10-24 | 2013-11-27 | 11FF | 8d |  |  | Project Manager [20%] | 40h | 3,200 |
| 15 | 1.4.6 | T8 order new special equipment |  | 6.5d | 2013-12-03 | 2013-12-11 | 13 | -1.5d | 0d | finish no later than 2013-12-15 | Sales representative; Clerk [400%] | 312h | 9,880 |
| 16 | 1.4.7 | Dev3 | milestone | 0d | 2013-12-11 | 2013-12-11 | 15 | 27d |  |  |  |  |  |
| 17 | 1.4.8 | T9 vist and supervise the rooms |  | 13d | 2013-11-10 | 2013-11-27 | 7SS, 11SS | -15d | 0d | start no later than 2013-11-10 | Teacher; Clerk [200%] | 312h | 10,400 |
| 18 | 1.5 | Phase 2 finished | milestone | 0d | 2013-12-11 | 2013-12-11 | 9FF | 27d |  |  |  |  |  |
| 19 | 1.6 | **Phase 3** |  | 45.5d | 2013-11-15 | 2014-01-17 |  | -1.5d | 0d |  |  | 434.8h | 15,534 |
| 20 | 1.6.1 | T10 unpack and inspect equipment |  | 7d | 2013-12-11 | 2013-12-20 | 14, 15 | -1.5d | 0d |  | Sales representative; Clerk [200%] | 168h | 5,320 |
| 21 | 1.6.2 | T11 install services |  | 9d | 2013-11-15 | 2013-11-27 | 17FF | 15d |  |  | Project Manager [20%]; Clerk | 64.4h | 2,402 |
| 22 | 1.6.3 | T12 install equipment |  | 11d | 2013-12-20 | 2014-01-06 | 20, 21 | -1.5d | 0d |  | Sales representative; Clerk [200%] | 188h | 6,460 |
| 23 | 1.6.4 | Dev4 | milestone | 0d | 2014-01-06 | 2014-01-06 | 22 | 7.5d |  |  |  |  |  |
| 24 | 1.6.5 | T13 workshop execution |  | 9d | 2014-01-06 | 2014-01-17 | 22 | -1.5d | 0d |  | Project Manager [20%]; Equipment [2000%] | 14.4h | 1,352 |
| 25 | 1.7 | Phase 3 finished | milestone | 0d | 2014-01-17 | 2014-01-17 | 19FF | -1.5d | 0d |  |  |  |  |
| 26 | 1.8 | Project finished | milestone | 0d | 2014-01-15 | 2014-01-15 | 25 | -1.5d | 0d | must finish on 2014-01-15 |  |  |  |

| ID | WBS | Task | Duration | Start | Finish | Total slack | Constraint |
| --- | --- | --- | --- | --- | --- | --- | --- |
| 27 | 1.9 | **Project meetings** | 70.5d | 2013-10-07 | 2014-01-13 | 4d |  |
| 28 | 1.9.1 | Project meetings 1 | 4h | 2013-10-07 | 2013-10-07 | 74d | start no earlier than 2013-10-07 |
| 29 | 1.9.2 | Project meetings 2 | 4h | 2013-10-21 | 2013-10-21 | 64d | start no earlier than 2013-10-21 |
| 30 | 1.9.3 | Project meetings 3 | 4h | 2013-11-04 | 2013-11-04 | 54d | start no earlier than 2013-11-04 |
| 31 | 1.9.4 | Project meetings 4 | 4h | 2013-11-18 | 2013-11-18 | 44d | start no earlier than 2013-11-18 |
| 32 | 1.9.5 | Project meetings 5 | 4h | 2013-12-02 | 2013-12-02 | 34d | start no earlier than 2013-12-02 |
| 33 | 1.9.6 | Project meetings 6 | 4h | 2013-12-16 | 2013-12-16 | 24d | start no earlier than 2013-12-16 |
| 34 | 1.9.7 | Project meetings 7 | 4h | 2013-12-30 | 2013-12-30 | 14d | start no earlier than 2013-12-30 |
| 35 | 1.9.8 | Project meetings 8 | 4h | 2014-01-13 | 2014-01-13 | 4d | start no earlier than 2014-01-13 |
